# Project2 Req Schedule

Schedule from MS Project, 2025-03-03 to 2026-06-17, costs in $.

## Calendars

- Standard: Mon-Fri 08:00-12:00, 13:00-17:00; Sat-Sun off.

## Resources

| Resource | Rate |
| --- | --- |
| PM | 100 |
| Req Lead | 80 |
| Req eng 1 | 60 |
| Req eng 2 | 60 |
| Req eng 3 | 60 |
| Req eng 4 | 60 |
| Arch Lead | 90 |
| Dev Lead | 90 |
| Test Lead | 80 |
| Deploy Lead | 85 |
| Req eng 5 | 50 |
| Legal Team | 50 |
| Client |  |
| Req eng 7 | 50 |
| Req eng 6 | 50 |
| Req eng 8 |  |
| Architecture Lead 1 |  |
| Project Manager |  |
| Requirements Lead |  |
| Architecture Lead 2 |  |
| Cloud Architecture Engineer 2 |  |
| Archictecture Engineer 3 |  |
| Archictecture Engineer 4 |  |
| Security Engineer |  |
| DevOps Engineer 1 |  |
| Developer Lead |  |
| Cloud Architecture Engineer 1 |  |
| Database Architect 1 |  |
| Database Architect 2 |  |
| Archictecture Engineer 2 |  |
| Software Engineer 1 |  |
| Legal |  |
| front-end-dev1 |  |
| front-end-dev2 |  |
| front-end-dev3 |  |
| front-end-dev4 |  |
| back-end-dev1 |  |
| back-end-dev2 |  |
| back-end-dev3 |  |
| back-end-dev4 |  |
| back-end-dev5 |  |
| Tester1 |  |
| Tester2 |  |
| Tester3 |  |
| Tester4 |  |
| Tester5 |  |
| Deploy-eng-4 |  |
| Deploy-eng-1 |  |
| Deploy-eng-2 |  |

## Schedule

| ID | WBS | Task | Duration | Start | Finish | Predecessors | Total slack | Free slack | Resources | Work | Cost |
| --- | --- | --- | --- | --- | --- | --- | --- | --- | --- | --- | --- |
| 1 | 1 | **Project Start** | 338d | 2025-03-03 | 2026-06-17 |  | 0d |  |  | 15232h | 367,680 |
| 2 | 1.1 | SOW Signed | 1d | 2025-03-03 | 2025-03-03 |  | 201d | 0d |  |  |  |
| 3 | 1.2 | PM Activities | 79d | 2025-03-03 | 2025-06-19 |  | 123d | 0d | PM | 632h | 63,200 |
| 4 | 1.3 | **Requirements[Anushka]** | 173d | 2025-03-03 | 2025-10-29 |  | 165d | 0d |  | 1704h | 99,680 |
| 5 | 1.3.1 | **Stakeholder Template** | 20d | 2025-06-20 | 2025-07-17 |  | 123d | 0d |  | 264h | 17,840 |
| 6 | 1.3.1.1 | Identify Stakeholders | 5d | 2025-06-20 | 2025-06-26 | 2, 3 | 123d | 0d | Req eng 1 | 40h | 2,400 |
| 7 | 1.3.1.2 | Conduct Stakeholder interviews | 5d | 2025-06-27 | 2025-07-03 | 6, 2 | 123d | 0d | Req eng 1 | 40h | 2,400 |
| 8 | 1.3.1.3 | Identify and document Stakeholder Objectives | 5d | 2025-07-04 | 2025-07-10 | 7 | 123d | 0d | Req eng 2 | 40h | 2,400 |
| 9 | 1.3.1.4 | Create draft Stakeholder Template | 5d | 2025-06-27 | 2025-07-03 | 6 | 249d | 0d | Req eng 2 | 40h | 2,400 |
| 10 | 1.3.1.5 | Review draft Stakeholder Template with Leads | 2d | 2025-07-11 | 2025-07-14 | 7, 8 | 239d | 0d | Arch Lead; Deploy Lead; Dev Lead; Req Lead; Test Lead | 80h | 6,800 |
| 11 | 1.3.1.6 | Create final Stakeholder Template | 3d | 2025-07-15 | 2025-07-17 | 10 | 239d | 0d | Req eng 1 | 24h | 1,440 |
| 12 | 1.3.2 | **Req Specification doc** | 173d | 2025-03-03 | 2025-10-29 |  | 165d | 0d |  | 1440h | 81,840 |
| 13 | 1.3.2.1 | **Technical Req** | 173d | 2025-03-03 | 2025-10-29 |  | 165d | 0d |  | 1440h | 81,840 |
| 14 | 1.3.2.1.1 | **Front end** | 141d | 2025-03-03 | 2025-09-15 |  | 197d | 0d |  | 1032h | 57,160 |
| 15 | 1.3.2.1.1.1 | **User Authentication** | 6d | 2025-07-11 | 2025-07-18 |  | 123d | 0d |  | 48h | 2,880 |
| 16 | 1.3.2.1.1.1.1 | Create Registration Page | 3d | 2025-07-11 | 2025-07-15 | 8 | 123d | 0d | Req eng 3 | 24h | 1,440 |
| 17 | 1.3.2.1.1.1.2 | Create Login Page | 3d | 2025-07-16 | 2025-07-18 | 16 | 123d | 0d | Req eng 3 | 24h | 1,440 |
| 18 | 1.3.2.1.1.2 | **User Profiles** | 115d | 2025-03-03 | 2025-08-08 |  | 223d | 0d |  | 248h | 15,920 |
| 19 | 1.3.2.1.1.2.1 | **Buyers** | 2d | 2025-03-03 | 2025-03-04 |  | 336d | 0d |  | 16h | 960 |
| 20 | 1.3.2.1.1.2.1.1 | Create Profiles | 2d | 2025-03-03 | 2025-03-04 |  | 336d | 0d | Req eng 1 | 16h | 960 |
| 21 | 1.3.2.1.1.2.2 | Create profile | 2d | 2025-07-21 | 2025-07-22 | 17 | 123d | 0d | Req eng 3 | 16h | 960 |
| 22 | 1.3.2.1.1.2.3 | Track bid | 2d | 2025-07-23 | 2025-07-24 | 21 | 234d | 0d | Req eng 3 | 16h | 960 |
| 23 | 1.3.2.1.1.2.4 | **Sellers** | 13d | 2025-07-23 | 2025-08-08 |  | 123d | 0d |  | 200h | 13,040 |
| 24 | 1.3.2.1.1.2.4.1 | List Medical Supplies for auction | 3d | 2025-07-23 | 2025-07-25 | 21 | 123d | 0d | Req eng 1 | 24h | 1,440 |
| 25 | 1.3.2.1.1.2.4.2 | Upload Pictures & set starting bids | 4d | 2025-07-28 | 2025-07-31 | 24 | 123d | 0d | Req eng 1 | 32h | 1,920 |
| 26 | 1.3.2.1.1.2.4.3 | Define Auction Duration | 4d | 2025-08-01 | 2025-08-06 | 25 | 123d | 0d | Req eng 1 | 32h | 1,920 |
| 27 | 1.3.2.1.1.2.4.4 | Review User Auth and Profile with Leads | 2d | 2025-07-23 | 2025-07-24 | 16, 17, 21 | 159d | 0d | Arch Lead; Deploy Lead; Dev Lead; Req Lead; Test Lead | 80h | 6,800 |
| 28 | 1.3.2.1.1.2.4.5 | Review / Approval from Customer on Auth and Profile | 2d | 2025-08-07 | 2025-08-08 | 27, 24, 25, 26 | 150d | 0d | Req eng 1; Client | 32h | 960 |

| ID | WBS | Task | Duration | Start | Finish | Predecessors | Total slack | Free slack | Resources | Work | Cost |
| --- | --- | --- | --- | --- | --- | --- | --- | --- | --- | --- | --- |
| 29 | 1.3.2.1.1.3 | **Auction Listing & Management** | 10d | 2025-08-07 | 2025-08-20 |  | 123d | 0d |  | 80h | 4,800 |
| 30 | 1.3.2.1.1.3.1 | Create auction listings with detailed medical supply descriptions, images, and specifications | 2d | 2025-08-07 | 2025-08-08 | 26, 24, 25 | 123d | 0d | Req eng 4 | 16h | 960 |
| 31 | 1.3.2.1.1.3.2 | Set minimum bid amounts and reserve prices | 2d | 2025-08-11 | 2025-08-12 | 30 | 123d | 0d | Req eng 4 | 16h | 960 |
| 32 | 1.3.2.1.1.3.3 | Automated auction closing upon expiry | 2d | 2025-08-13 | 2025-08-14 | 31 | 123d | 0d | Req eng 4 | 16h | 960 |
| 33 | 1.3.2.1.1.3.4 | Real-Time Bidding System | 2d | 2025-08-15 | 2025-08-18 | 32 | 123d | 0d | Req eng 4 | 16h | 960 |
| 34 | 1.3.2.1.1.3.5 | Live bid updates, email, and push notifications | 2d | 2025-08-19 | 2025-08-20 | 33 | 123d | 0d | Req eng 4 | 16h | 960 |
| 35 | 1.3.2.1.1.4 | Compliance Verification | 2d | 2025-08-21 | 2025-08-22 | 34 | 123d | 0d | Req eng 4 | 16h | 960 |
| 36 | 1.3.2.1.1.5 | **Payment Processing** | 3d | 2025-08-25 | 2025-08-27 |  | 123d | 0d |  | 24h | 1,200 |
| 37 | 1.3.2.1.1.5.1 | Secure payment gateway with multiple methods (Credit/Debit, Digital Wallets) | 2d | 2025-08-25 | 2025-08-26 | 35 | 123d | 0d | Req eng 6 | 16h | 800 |
| 38 | 1.3.2.1.1.5.2 | Secure escrow system for transaction protection | 1d | 2025-08-27 | 2025-08-27 | 37 | 123d | 0d | Req eng 6 | 8h | 400 |
| 39 | 1.3.2.1.1.6 | Transaction & Order History | 2d | 2025-08-28 | 2025-08-29 | 38 | 123d | 0d | Req eng 6 | 16h | 800 |
| 40 | 1.3.2.1.1.7 | Rating & Reviews | 2d | 2025-09-01 | 2025-09-02 | 39 | 123d | 0d | Req eng 6 | 16h | 800 |
| 41 | 1.3.2.1.1.8 | Review Auction & Payment with Leads | 2d | 2025-09-03 | 2025-09-04 | 37, 38, 39, 40 | 123d | 0d | Arch Lead; Deploy Lead; Dev Lead; Req Lead; Test Lead | 80h | 6,800 |
| 42 | 1.3.2.1.1.9 | Review / Approval of Auction & Payment with Customer | 2d | 2025-09-05 | 2025-09-08 | 41 | 123d | 0d | Req eng 6; Client | 32h | 800 |
| 43 | 1.3.2.1.1.10 | **Admin Dashboard** | 8d | 2025-09-03 | 2025-09-12 |  | 198d | 0d |  | 64h |  |
| 44 | 1.3.2.1.1.10.1 | Manage user accounts, auction listings, transaction reports | 5d | 2025-09-03 | 2025-09-09 | 40 | 198d | 0d | Req eng 8 | 40h |  |
| 45 | 1.3.2.1.1.10.2 | Fraud detection and user verification features | 3d | 2025-09-10 | 2025-09-12 | 44 | 198d | 0d | Req eng 8 | 24h |  |
| 46 | 1.3.2.1.1.11 | **Backend Req** | 28d | 2025-08-07 | 2025-09-15 |  | 197d | 0d |  | 408h | 22,200 |
| 47 | 1.3.2.1.1.11.1 | **Authentication & Authorization** | 28d | 2025-08-07 | 2025-09-15 |  | 197d | 0d |  | 408h | 22,200 |
| 48 | 1.3.2.1.1.11.1.1 | Secure user authentication | 2d | 2025-08-07 | 2025-08-08 | 24, 26 | 197d | 0d | Req eng 7 | 16h | 800 |
| 49 | 1.3.2.1.1.11.1.2 | Role-based access control (Admin, Buyer, Seller) | 2d | 2025-08-11 | 2025-08-12 | 48 | 197d | 0d | Req eng 7 | 16h | 800 |
| 50 | 1.3.2.1.1.11.1.3 | **Database Management** | 24d | 2025-08-13 | 2025-09-15 |  | 197d | 0d |  | 376h | 20,600 |
| 51 | 1.3.2.1.1.11.1.3.1 | Relational database to store user profiles, auction listings, bids, transactions, and reviews | 6d | 2025-08-13 | 2025-08-20 | 49 | 197d | 0d | Req eng 8 | 48h |  |
| 52 | 1.3.2.1.1.11.1.3.2 | Ensure data integrity and normalization | 4d | 2025-08-21 | 2025-08-26 | 51 | 197d | 0d | Req eng 8 | 32h |  |

| ID | WBS | Task | Duration | Start | Finish | Predecessors | Total slack | Free slack | Resources | Work | Cost |
| --- | --- | --- | --- | --- | --- | --- | --- | --- | --- | --- | --- |
| 53 | 1.3.2.1.1.11.1.3.3 | **Auction Management System** | 14d | 2025-08-27 | 2025-09-15 |  | 197d | 0d |  | 296h | 20,600 |
| 54 | 1.3.2.1.1.11.1.3.3.1 | CRUD operations for auction listings | 3d | 2025-08-27 | 2025-08-29 | 52 | 197d | 0d | Req eng 3 | 24h | 1,440 |
| 55 | 1.3.2.1.1.11.1.3.3.2 | Automated auction expiration and winner selection | 4d | 2025-09-01 | 2025-09-04 | 54 | 197d | 0d | Req eng 3 | 32h | 1,920 |
| 56 | 1.3.2.1.1.11.1.3.3.3 | Get signoff from Leads on the technical requirements | 2d | 2025-09-05 | 2025-09-08 | 55 | 197d | 0d | Arch Lead; Deploy Lead; Dev Lead; Req Lead; Test Lead | 80h | 6,800 |
| 57 | 1.3.2.1.1.11.1.3.3.4 | **Admin Panel Features** | 5d | 2025-09-09 | 2025-09-15 |  | 197d | 0d |  | 40h | 2,400 |
| 58 | 1.3.2.1.1.11.1.3.3.4.1 | Dashboard for monitoring user activity | 2d | 2025-09-09 | 2025-09-10 | 56 | 197d | 0d | Req eng 4 | 16h | 960 |
| 59 | 1.3.2.1.1.11.1.3.3.4.2 | Fraud detection and account suspension mechanisms | 3d | 2025-09-11 | 2025-09-15 | 58 | 197d | 0d | Req eng 4 | 24h | 1,440 |
| 60 | 1.3.2.1.1.11.1.3.3.5 | Review technical Req doc with Client and get signoff | 3d | 2025-09-09 | 2025-09-11 | 56 | 199d | 0d | Arch Lead; Deploy Lead; Req Lead; Test Lead; Client | 120h | 8,040 |
| 61 | 1.3.2.1.2 | **Wireframes** | 37d | 2025-09-09 | 2025-10-29 |  | 123d | 0d |  | 408h | 24,680 |
| 62 | 1.3.2.1.2.1 | Auction Listing Page | 3d | 2025-09-09 | 2025-09-11 | 42 | 123d | 0d | Req eng 2 | 24h | 1,440 |
| 63 | 1.3.2.1.2.2 | Auction Details Page | 3d | 2025-09-12 | 2025-09-16 | 62 | 123d | 0d | Req eng 3 | 24h | 1,440 |
| 64 | 1.3.2.1.2.3 | Auction Registration Page | 3d | 2025-09-17 | 2025-09-19 | 63, 28 | 123d | 0d | Req eng 5 | 24h | 1,200 |
| 65 | 1.3.2.1.2.4 | Bid Management Page | 3d | 2025-09-22 | 2025-09-24 | 64 | 123d | 0d | Req eng 1 | 24h | 1,440 |
| 66 | 1.3.2.1.2.5 | Supplier Verification page | 3d | 2025-09-25 | 2025-09-29 | 65 | 123d | 0d | Req eng 4 | 24h | 1,440 |
| 67 | 1.3.2.1.2.6 | Transaction & Order History Page | 3d | 2025-09-30 | 2025-10-02 | 66 | 123d | 0d | Req eng 6 | 24h | 1,200 |
| 68 | 1.3.2.1.2.7 | Notification & Alerts Page | 3d | 2025-10-03 | 2025-10-07 | 67 | 123d | 0d | Req eng 7 | 24h | 1,200 |
| 69 | 1.3.2.1.2.8 | Review Wireframes with Leads | 1d | 2025-10-08 | 2025-10-08 | 68 | 123d | 0d | Test Lead; Arch Lead; Deploy Lead; Dev Lead | 32h | 2,760 |
| 70 | 1.3.2.1.2.9 | Update Wireframes | 2d | 2025-10-09 | 2025-10-10 | 69 | 123d | 0d | Req eng 8 | 16h |  |
| 71 | 1.3.2.1.2.10 | Review Wireframes with client and get signoff | 1d | 2025-10-13 | 2025-10-13 | 70 | 123d | 0d | Req Lead; Client | 16h | 640 |
| 72 | 1.3.2.1.2.11 | **App Map** | 12d | 2025-10-14 | 2025-10-29 |  | 123d | 0d |  | 176h | 11,920 |
| 73 | 1.3.2.1.2.11.1 | Review exisiting dashboard applications | 2d | 2025-10-14 | 2025-10-15 | 71 | 123d | 0d | Req eng 3 | 16h | 960 |
| 74 | 1.3.2.1.2.11.2 | Identify User Roles and Navigation Paths | 2d | 2025-10-16 | 2025-10-17 | 73 | 123d | 0d | Req eng 3 | 16h | 960 |
| 75 | 1.3.2.1.2.11.3 | Document Integration Points | 2d | 2025-10-20 | 2025-10-21 | 74 | 123d | 0d | Req eng 6 | 16h | 800 |
| 76 | 1.3.2.1.2.11.4 | Create a Draft App Map | 2d | 2025-10-22 | 2025-10-23 | 75 | 123d | 0d | Req eng 6 | 16h | 800 |
| 77 | 1.3.2.1.2.11.5 | Review Draft App Map with leads | 2d | 2025-10-24 | 2025-10-27 | 76 | 123d | 0d | Arch Lead; Dev Lead; Deploy Lead; Req Lead; Test Lead | 80h | 6,800 |
| 78 | 1.3.2.1.2.11.6 | Update App Map and create final App Map | 2d | 2025-10-28 | 2025-10-29 | 77 | 123d | 0d | Req eng 6; Req eng 7 | 32h | 1,600 |

| ID | WBS | Task | Duration | Start | Finish | Total slack | Free slack | Resources | Work |
| --- | --- | --- | --- | --- | --- | --- | --- | --- | --- |
| 79 | 1.4 | **Architecture** | 7d | 2025-03-03 | 2025-03-11 | 225d | 0d |  | 2144h |
| 80 | 1.4.1 | **Architecture Planning and Designing Systems** | 5d | 2025-03-03 | 2025-03-07 | 333d | 0d |  | 584h |
| 81 | 1.4.1.1 | **Reviewing Requirements and Planning Architecture** | 5d | 2025-03-03 | 2025-03-07 | 333d | 0d |  | 72h |
| 82 | 1.4.1.1.1 | Review Requirements | 3d | 2025-03-03 | 2025-03-05 | 335d | 0d | Architecture Lead 1; Project Manager; Requirements Lead | 72h |
| 83 | 1.4.1.1.2 | Discuss Architectural Components | 2d | 2025-03-03 | 2025-03-04 | 336d | 0d |  |  |
| 84 | 1.4.1.1.3 | Assess and Select Tech Stack | 2d | 2025-03-03 | 2025-03-04 | 336d | 0d |  |  |
| 85 | 1.4.1.1.4 | Assessing security and regulatory requirements | 2d | 2025-03-03 | 2025-03-04 | 336d | 0d |  |  |
| 86 | 1.4.1.1.5 | Architectural Diagrams | 5d | 2025-03-03 | 2025-03-07 | 333d | 0d |  |  |
| 87 | 1.4.1.1.6 | Review Final Document with Leads | 2d | 2025-03-03 | 2025-03-04 | 336d | 0d |  |  |
| 88 | 1.4.1.1.7 | Review Final Document with Customers and get Signed | 2d | 2025-03-03 | 2025-03-04 | 336d | 0d |  |  |
| 89 | 1.4.1.2 | **Cloud Infrastructure and Environment Architecture** | 5d | 2025-03-03 | 2025-03-07 | 333d | 0d |  | 512h |
| 90 | 1.4.1.2.1 | Assess and decide on Hosting Provider | 3d | 2025-03-03 | 2025-03-05 | 335d | 0d | Project Manager; Architecture Lead 2; Cloud Architecture Engineer 2 | 72h |
| 91 | 1.4.1.2.2 | Configure Cloud Solution | 5d | 2025-03-03 | 2025-03-07 | 333d | 0d | Archictecture Engineer 3; Cloud Architecture Engineer 2 | 80h |
| 92 | 1.4.1.2.3 | Configure Security and Networking Solution | 2d | 2025-03-03 | 2025-03-04 | 336d | 0d | Archictecture Engineer 3; Archictecture Engineer 4; Security Engineer | 48h |
| 93 | 1.4.1.2.4 | Create CI/CD pipeline | 2d | 2025-03-03 | 2025-03-04 | 336d | 0d | Architecture Lead 1; Archictecture Engineer 3; Archictecture Engineer 4 | 48h |
| 94 | 1.4.1.2.5 | Set up staging and development environments | 4d | 2025-03-03 | 2025-03-06 | 334d | 0d | Archictecture Engineer 4; DevOps Engineer 1 | 64h |
| 95 | 1.4.1.2.6 | Develop Deployment Architecture | 3d | 2025-03-03 | 2025-03-05 | 335d | 0d | Architecture Lead 1; Archictecture Engineer 3; Archictecture Engineer 4; Developer Lead; Architecture Lead 2; Security Engineer; Cloud Architecture Engineer 1 | 168h |
| 96 | 1.4.1.2.7 | Test Environments | 2d | 2025-03-03 | 2025-03-04 | 336d | 0d | Archictecture Engineer 3; Cloud Architecture Engineer 2 | 32h |
| 97 | 1.4.2 | **Data Managment Architecture** | 4d | 2025-03-03 | 2025-03-06 | 334d | 0d |  | 320h |
| 98 | 1.4.2.1 | Review Database Requirements | 1d | 2025-03-03 | 2025-03-03 | 337d | 0d | Architecture Lead 1; Cloud Architecture Engineer 1; Database Architect 1; Database Architect 2 | 32h |
| 99 | 1.4.2.2 | Design Data Models | 4d | 2025-03-03 | 2025-03-06 | 334d | 0d |  |  |
| 100 | 1.4.2.3 | Design Database Schema | 4d | 2025-03-03 | 2025-03-06 | 334d | 0d | Archictecture Engineer 2; Database Architect 2 | 64h |
| 101 | 1.4.2.4 | Assess and Choose Database Stack | 2d | 2025-03-03 | 2025-03-04 | 336d | 0d | Architecture Lead 2; Database Architect 2 | 32h |
| 102 | 1.4.2.5 | Develop Data Security and Recovery Protocols | 4d | 2025-03-03 | 2025-03-06 | 334d | 0d | Security Engineer; Cloud Architecture Engineer 1; Database Architect 1 | 96h |
| 103 | 1.4.2.6 | Review Database Architecture | 2d | 2025-03-03 | 2025-03-04 | 336d | 0d | Archictecture Engineer 3; Archictecture Engineer 4 | 32h |
| 104 | 1.4.2.7 | Review Review Database Architecture with Leads | 2d | 2025-03-03 | 2025-03-04 | 336d | 0d | Architecture Lead 1; Project Manager; Security Engineer; Cloud Architecture Engineer 1 | 64h |

| ID | WBS | Task | Duration | Start | Finish | Total slack | Free slack | Resources | Work |
| --- | --- | --- | --- | --- | --- | --- | --- | --- | --- |
| 105 | 1.4.3 | **API and Microservices Architecture** | 6d | 2025-03-03 | 2025-03-10 | 233d | 0d |  | 176h |
| 106 | 1.4.3.1 | Review API and Microservice Requirements | 2d | 2025-03-03 | 2025-03-04 | 336d | 0d | Architecture Lead 1; Project Manager; Developer Lead | 48h |
| 107 | 1.4.3.2 | Create API Architecture | 4d | 2025-03-03 | 2025-03-06 | 233d | 0d |  |  |
| 108 | 1.4.3.3 | Create API Security and Authentication Models | 4d | 2025-03-03 | 2025-03-06 | 330d | 0d | Archictecture Engineer 2; Security Engineer; Software Engineer 1 | 96h |
| 109 | 1.4.3.4 | Develop High Level Component Diagrams | 2d | 2025-03-03 | 2025-03-04 | 336d | 0d | Archictecture Engineer 2; Software Engineer 1 | 32h |
| 110 | 1.4.3.5 | Develop System Failure Recovery Strategy | 6d | 2025-03-03 | 2025-03-10 | 292d | 0d |  |  |
| 111 | 1.4.3.6 | Define Load Balancing Architecture | 2d | 2025-03-03 | 2025-03-04 | 336d | 0d |  |  |
| 112 | 1.4.3.7 | Review API and Microservices Architecture with Leads | 2d | 2025-03-03 | 2025-03-04 | 336d | 0d |  |  |
| 113 | 1.4.4 | **Federal Compliance Architecture** | 7d | 2025-03-03 | 2025-03-11 | 281d | 0d |  | 664h |
| 114 | 1.4.4.1 | Review Federal and Medical Compliance Requirements (HIPPA, FDA) | 3d | 2025-03-03 | 2025-03-05 | 305d | 0d | Architecture Lead 1; Developer Lead | 48h |
| 115 | 1.4.4.2 | Define Audit Control Architecture | 2d | 2025-03-03 | 2025-03-04 | 306d | 0d |  |  |
| 116 | 1.4.4.3 | Create regulatory logging and report Architecture | 4d | 2025-03-03 | 2025-03-06 | 281d | 0d | Archictecture Engineer 3; Archictecture Engineer 4 | 64h |
| 117 | 1.4.4.4 | Define User authentication and audit tool controls | 4d | 2025-03-03 | 2025-03-06 | 304d | 0d | Architecture Lead 1; Archictecture Engineer 3; Archictecture Engineer 4; Architecture Lead 2 | 128h |
| 118 | 1.4.4.5 | Review Data Handling and Audit Architecture for PHI compliance | 2d | 2025-03-03 | 2025-03-04 | 306d | 0d | Archictecture Engineer 3; Archictecture Engineer 4 | 32h |
| 119 | 1.4.4.6 | Develop Incident Report Architecture | 4d | 2025-03-03 | 2025-03-06 | 304d | 0d | Architecture Lead 1; Archictecture Engineer 3; Archictecture Engineer 4; Developer Lead; Architecture Lead 2; Security Engineer; Cloud Architecture Engineer 1 | 224h |
| 120 | 1.4.4.7 | Verify Compliance Architecture | 7d | 2025-03-03 | 2025-03-11 | 301d | 0d | Architecture Lead 1; Architecture Lead 2; Legal | 168h |
| 121 | 1.4.5 | **Architecture Review** | 4d | 2025-03-03 | 2025-03-06 | 225d | 0d |  | 400h |
| 122 | 1.4.5.1 | Evaluate Architectural Design | 4d | 2025-03-03 | 2025-03-06 | 233d | 0d | Architecture Lead 2; DevOps Engineer 1; Cloud Architecture Engineer 1; Database Architect 1; Software Engineer 1 | 160h |
| 123 | 1.4.5.2 | Analyze Preformance and Scalability | 2d | 2025-03-03 | 2025-03-04 | 331d | 0d | Architecture Lead 1; Project Manager | 32h |
| 124 | 1.4.5.3 | Review Architecture Models | 2d | 2025-03-03 | 2025-03-04 | 331d | 0d | Project Manager; Architecture Lead 2 | 32h |
| 125 | 1.4.5.4 | Review Data Architecture | 2d | 2025-03-03 | 2025-03-04 | 333d | 0d | Architecture Lead 1; Project Manager | 32h |
| 126 | 1.4.5.5 | Review Deployment Architecture | 2d | 2025-03-03 | 2025-03-04 | 329d | 0d | Project Manager; Architecture Lead 2 | 32h |
| 127 | 1.4.5.6 | Review API and Microservices Architecture | 2d | 2025-03-03 | 2025-03-04 | 336d | 0d |  |  |
| 128 | 1.4.5.7 | Finalize Architecture and Assess Possible Improvements | 2d | 2025-03-03 | 2025-03-04 | 336d | 0d | Architecture Lead 1; Project Manager; Architecture Lead 2 | 48h |
| 129 | 1.4.5.8 | Review Architecture with Development Lead | 2d | 2025-03-03 | 2025-03-04 | 225d | 0d | Architecture Lead 1; Project Manager; Developer Lead; Architecture Lead 2 | 64h |

| ID | WBS | Task | Duration | Start | Finish | Predecessors | Total slack | Free slack | Resources | Work |
| --- | --- | --- | --- | --- | --- | --- | --- | --- | --- | --- |
| 130 | 1.5 | **Coding[Kailong Duan]** | 331d | 2025-03-03 | 2026-06-08 |  | 7d | 0d |  | 5152h |
| 131 | 1.5.1 | **Front-end** | 195d | 2025-03-03 | 2025-11-28 |  | 123d | 0d |  | 1064h |
| 132 | 1.5.1.1 | **UI design** | 8d | 2025-03-03 | 2025-03-12 |  | 223d | 0d |  | 224h |
| 133 | 1.5.1.1.1 | Rating& Reviews UI | 3d | 2025-03-03 | 2025-03-05 |  | 298d | 0d | front-end-dev1 | 24h |
| 134 | 1.5.1.1.2 | User Authentication UI | 5d | 2025-03-03 | 2025-03-07 |  | 308d | 0d | front-end-dev2 | 40h |
| 135 | 1.5.1.1.3 | CRUD auction Medical UI | 5d | 2025-03-03 | 2025-03-07 |  | 308d | 0d | front-end-dev2 | 40h |
| 136 | 1.5.1.1.4 | User Profiles UI | 5d | 2025-03-03 | 2025-03-07 |  | 308d | 0d | front-end-dev3 | 40h |
| 137 | 1.5.1.1.5 | Admin Dashboard UI | 5d | 2025-03-06 | 2025-03-12 | 133 | 298d | 0d | front-end-dev3 | 40h |
| 138 | 1.5.1.1.6 | User feedback UI | 5d | 2025-03-03 | 2025-03-07 |  | 223d | 0d | front-end-dev4 | 40h |
| 139 | 1.5.1.2 | **development** | 193d | 2025-03-05 | 2025-11-28 | 129 | 123d | 0d |  | 840h |
| 140 | 1.5.1.2.1 | **User Profiles** | 7d | 2025-03-05 | 2025-03-13 |  | 223d | 0d |  | 56h |
| 141 | 1.5.1.2.1.1 | User Login, Register | 3d | 2025-03-05 | 2025-03-07 |  | 227d | 0d | front-end-dev1 | 24h |
| 142 | 1.5.1.2.1.2 | Review / Verification | 4d | 2025-03-10 | 2025-03-13 | 138 | 223d | 0d | front-end-dev1 | 32h |
| 143 | 1.5.1.2.2 | **Medical Supplies Auction Settings** | 12d | 2025-03-05 | 2025-03-20 |  | 223d | 0d |  | 200h |
| 144 | 1.5.1.2.2.1 | Medical Function List | 5d | 2025-03-05 | 2025-03-11 |  | 225d | 0d | front-end-dev2 | 40h |
| 145 | 1.5.1.2.2.2 | Image Upload | 5d | 2025-03-10 | 2025-03-14 | 141 | 227d | 0d | front-end-dev2 | 40h |
| 146 | 1.5.1.2.2.3 | Medical Price Settings | 5d | 2025-03-14 | 2025-03-20 | 142 | 223d | 0d | front-end-dev2 | 40h |
| 147 | 1.5.1.2.2.4 | Auction Time Settings | 5d | 2025-03-05 | 2025-03-11 |  | 230d | 0d | front-end-dev2 | 40h |
| 148 | 1.5.1.2.2.5 | Medical Supplies Detailed Description | 5d | 2025-03-12 | 2025-03-18 | 144 | 225d | 0d | front-end-dev2 | 40h |
| 149 | 1.5.1.2.3 | **Auction User Feedback** | 10d | 2025-10-30 | 2025-11-12 | 78 | 123d | 0d |  | 200h |
| 150 | 1.5.1.2.3.1 | Rating | 5d | 2025-10-30 | 2025-11-05 |  | 123d | 0d | front-end-dev4 | 40h |
| 151 | 1.5.1.2.3.2 | Customer Support | 5d | 2025-10-30 | 2025-11-05 | 147 | 140d | 0d | front-end-dev4 | 40h |
| 152 | 1.5.1.2.3.3 | Complaint Resolution | 5d | 2025-10-30 | 2025-11-05 | 148 | 140d | 0d | front-end-dev4 | 40h |
| 153 | 1.5.1.2.3.4 | Dispute Resolution | 5d | 2025-10-30 | 2025-11-05 |  | 128d | 0d | front-end-dev4 | 40h |
| 154 | 1.5.1.2.3.5 | User comment | 5d | 2025-11-06 | 2025-11-12 | 150 | 123d | 0d | front-end-dev4 | 40h |

| ID | WBS | Task | Duration | Start | Finish | Predecessors | Total slack | Free slack | Constraint | Resources | Work |
| --- | --- | --- | --- | --- | --- | --- | --- | --- | --- | --- | --- |
| 155 | 1.5.1.2.4 | **Admin Dashboard** | 187d | 2025-03-13 | 2025-11-28 | 137 | 123d | 0d |  |  | 384h |
| 156 | 1.5.1.2.4.1 | User Account Management | 12d | 2025-03-13 | 2025-03-28 |  | 298d | 0d |  | front-end-dev3 | 96h |
| 157 | 1.5.1.2.4.2 | Medical Supplies Approval | 12d | 2025-11-06 | 2025-11-21 | 153 | 128d | 0d |  | front-end-dev3 | 96h |
| 158 | 1.5.1.2.4.3 | Generate Medical Supplies Quality | 12d | 2025-11-13 | 2025-11-28 | 154 | 123d | 0d |  | front-end-dev3 | 96h |
| 159 | 1.5.1.2.4.4 | Transaction Approval | 12d | 2025-03-13 | 2025-03-28 |  | 298d | 0d |  | front-end-dev3 | 96h |
| 160 | 1.5.2 | **Back-end** | 252d | 2025-06-20 | 2026-06-08 |  | 7d | 0d |  |  | 4088h |
| 161 | 1.5.2.1 | **Database Design​** | 44d | 2025-06-20 | 2025-08-20 |  | 215d | 0d |  |  | 528h |
| 162 | 1.5.2.1.1 | Medical Supplies, schema | 4d | 2025-06-20 | 2025-06-25 |  | 255d | 0d | finish no earlier than 2025-06-25 | back-end-dev1 | 32h |
| 163 | 1.5.2.1.2 | Rating& Reviews, schema | 4d | 2025-06-26 | 2025-07-01 | 108 | 251d | 0d | finish no earlier than 2025-07-01 | back-end-dev1 | 32h |
| 164 | 1.5.2.1.3 | User, Medical Supplies schema | 4d | 2025-06-20 | 2025-06-25 |  | 255d | 0d | finish no earlier than 2025-06-25 | back-end-dev2 | 32h |
| 165 | 1.5.2.1.4 | Develop CRUD operations​ | 40d | 2025-06-26 | 2025-08-20 | 110 | 215d | 0d | finish no earlier than 2025-08-20 | back-end-dev2 | 320h |
| 166 | 1.5.2.1.5 | Database Ready | 14d | 2025-06-20 | 2025-07-09 |  | 245d | 0d | finish no earlier than 2025-07-09 | back-end-dev3 | 112h |
| 167 | 1.5.2.2 | **Real-Time Bidding System** | 62d | 2025-08-21 | 2025-11-14 | 107 | 153d | 0d |  |  | 1760h |
| 168 | 1.5.2.2.1 | Auction medical management | 15d | 2025-08-21 | 2025-09-10 |  | 200d | 0d | finish no earlier than 2025-09-10 | back-end-dev3; back-end-dev4 | 240h |
| 169 | 1.5.2.2.2 | Auction Status Tracking | 12d | 2025-09-11 | 2025-09-26 | 114 | 188d | 0d | finish no earlier than 2025-09-26 | back-end-dev3; back-end-dev4 | 192h |
| 170 | 1.5.2.2.3 | Real-Time Bidding Data | 14d | 2025-09-29 | 2025-10-16 | 115 | 174d | 0d | finish no earlier than 2025-10-16 | back-end-dev3; back-end-dev4 | 224h |
| 171 | 1.5.2.2.4 | Automatic Price Update | 15d | 2025-10-17 | 2025-11-06 | 116 | 121d | 0d | finish no earlier than 2025-11-06 | back-end-dev3; back-end-dev4 | 240h |
| 172 | 1.5.2.2.5 | email notification | 6d | 2025-11-07 | 2025-11-14 | 117 | 153d | 0d | finish no earlier than 2025-11-14 | back-end-dev3; back-end-dev4 | 96h |
| 173 | 1.5.2.2.6 | Historical Bidding Records | 15d | 2025-08-21 | 2025-09-10 |  | 200d | 0d | finish no earlier than 2025-09-10 | back-end-dev1; back-end-dev2 | 240h |
| 174 | 1.5.2.2.7 | Anti-Fraud Measures | 16d | 2025-09-11 | 2025-10-02 | 119 | 184d | 0d | finish no earlier than 2025-10-02 | back-end-dev1; back-end-dev2 | 256h |
| 175 | 1.5.2.2.8 | Proxy Bidding | 17d | 2025-10-03 | 2025-10-27 | 120 | 167d | 0d | finish no earlier than 2025-10-27 | back-end-dev1; back-end-dev2 | 272h |
| 176 | 1.5.2.3 | **Payment** | 25d | 2025-11-17 | 2025-12-19 | 107, 113 | 128d | 0d |  |  | 200h |
| 177 | 1.5.2.3.1 | PayPal support | 5d | 2025-11-17 | 2025-11-21 |  | 148d | 0d | finish no earlier than 2025-11-21 | back-end-dev2 | 40h |
| 178 | 1.5.2.3.2 | Payment Gateway Integration | 5d | 2025-11-24 | 2025-11-28 | 123 | 143d | 0d | finish no earlier than 2025-11-28 | back-end-dev2 | 40h |
| 179 | 1.5.2.3.3 | Payment Confirmation | 5d | 2025-12-01 | 2025-12-05 | 124 | 138d | 0d | finish no earlier than 2025-12-05 | back-end-dev2 | 40h |
| 180 | 1.5.2.3.4 | Payment History | 3d | 2025-12-08 | 2025-12-10 | 125 | 135d | 0d | finish no earlier than 2025-12-10 | back-end-dev2 | 24h |
| 181 | 1.5.2.3.5 | Payment Status Tracking | 7d | 2025-12-11 | 2025-12-19 | 126 | 128d | 0d | finish no earlier than 2025-12-19 | back-end-dev2 | 56h |

| ID | WBS | Task | Duration | Start | Finish | Predecessors | Total slack | Free slack | Constraint | Resources | Work | Cost |
| --- | --- | --- | --- | --- | --- | --- | --- | --- | --- | --- | --- | --- |
| 182 | 1.5.2.4 | **AI-based Bidding Algorithms** | 146d | 2025-11-17 | 2026-06-08 | 113 | 7d | 0d |  |  | 1168h |  |
| 183 | 1.5.2.4.1 | Model selection | 4d | 2025-11-17 | 2025-11-20 |  | 149d | 0d | finish no earlier than 2025-11-20 | back-end-dev5 | 32h |  |
| 184 | 1.5.2.4.2 | Data collection | 30d | 2025-11-21 | 2026-01-01 | 129 | 119d | 0d | finish no earlier than 2026-01-01 | back-end-dev5 | 240h |  |
| 185 | 1.5.2.4.3 | Data preprocessing | 12d | 2026-01-02 | 2026-01-19 |  | 107d | 0d | finish no earlier than 2026-01-19 | back-end-dev5 | 96h |  |
| 186 | 1.5.2.4.4 | Reinforcement learning | 20d | 2026-01-20 | 2026-02-16 | 131 | 87d | 0d | finish no earlier than 2026-02-16 | back-end-dev5 | 160h |  |
| 187 | 1.5.2.4.5 | Objective function | 25d | 2026-02-17 | 2026-03-23 | 132 | 62d | 0d | finish no earlier than 2026-03-23 | back-end-dev5 | 200h |  |
| 188 | 1.5.2.4.6 | User characteristics | 21d | 2026-03-24 | 2026-04-21 | 133 | 41d | 0d | finish no earlier than 2026-04-21 | back-end-dev5 | 168h |  |
| 189 | 1.5.2.4.7 | Predict user behavior | 12d | 2026-04-22 | 2026-05-07 | 134 | 29d | 0d | finish no earlier than 2026-05-07 | back-end-dev5 | 96h |  |
| 190 | 1.5.2.4.8 | Optimize the bidding strategy | 20d | 2026-05-08 | 2026-06-04 | 135 | 9d | 0d | finish no earlier than 2026-06-04 | back-end-dev5 | 160h |  |
| 191 | 1.5.2.4.9 | Model evaluation | 2d | 2026-06-05 | 2026-06-08 | 136 | 7d | 0d | finish no earlier than 2026-06-08 | back-end-dev5 | 16h |  |
| 192 | 1.5.2.5 | **Security Measures** | 32d | 2025-12-22 | 2026-02-03 | 107, 122 | 27d | 0d |  |  | 432h |  |
| 193 | 1.5.2.5.1 | Anti-Cheating System | 12d | 2025-12-22 | 2026-01-06 |  | 116d | 0d | finish no earlier than 2026-01-06 | back-end-dev3 | 96h |  |
| 194 | 1.5.2.5.2 | Rate Limiting | 5d | 2026-01-07 | 2026-01-13 | 139 | 111d | 0d | finish no earlier than 2026-01-13 | back-end-dev3 | 40h |  |
| 195 | 1.5.2.5.3 | Blacklist and User Restrictions | 5d | 2026-01-14 | 2026-01-20 | 140 | 106d | 0d | finish no earlier than 2026-01-20 | back-end-dev3 | 40h |  |
| 196 | 1.5.2.5.4 | Behavioral Analysis | 5d | 2025-12-22 | 2025-12-26 |  | 123d | 0d | finish no earlier than 2025-12-26 | back-end-dev4 | 40h |  |
| 197 | 1.5.2.5.5 | Manual Review System | 5d | 2026-01-21 | 2026-01-27 | 141 | 101d | 0d | finish no earlier than 2026-01-27 | back-end-dev4 | 40h |  |
| 198 | 1.5.2.5.6 | Bot Detection | 5d | 2025-12-29 | 2026-01-02 | 142 | 118d | 0d | finish no earlier than 2026-01-02 | back-end-dev4 | 40h |  |
| 199 | 1.5.2.5.7 | IP and Device Tracking | 5d | 2026-01-28 | 2026-02-03 | 143 | 0d |  | finish no earlier than 2026-02-03 | back-end-dev4 | 40h |  |
| 200 | 1.5.2.5.8 | Add HTTPS Encryption for Payment APIs | 12d | 2026-01-05 | 2026-01-20 | 144 | 85d | 0d | finish no earlier than 2026-01-20 | back-end-dev4 | 96h |  |
| 201 | 1.6 | **Tesing[Kailong Duan]** | 338d | 2025-03-03 | 2026-06-17 |  | 0d |  |  |  | 5600h | 204,800 |
| 202 | 1.6.1 | **Testing Plan** | 235d | 2025-03-03 | 2026-01-23 |  | 103d | 0d |  |  | 120h |  |
| 203 | 1.6.1.1 | Determine Test Objects | 4d | 2025-03-03 | 2025-03-06 |  | 334d | 0d |  | Tester1 | 32h |  |
| 204 | 1.6.1.2 | Define Test Scope | 3d | 2026-01-21 | 2026-01-23 | 200 | 85d | 0d |  | Tester1 | 24h |  |
| 205 | 1.6.1.3 | Resource Preparation | 3d | 2025-03-03 | 2025-03-05 |  | 256d | 0d |  | Tester1 | 24h |  |
| 206 | 1.6.1.4 | Identification Risk and mitigation | 5d | 2025-03-03 | 2025-03-07 |  | 328d | 0d |  | Tester1 | 40h |  |

| ID | WBS | Task | Duration | Start | Finish | Predecessors | Total slack | Free slack | Resources | Work |
| --- | --- | --- | --- | --- | --- | --- | --- | --- | --- | --- |
| 207 | 1.6.2 | **UAT testing** | 47d | 2026-02-04 | 2026-04-09 | 199 | 0d |  |  | 880h |
| 208 | 1.6.2.1 | **front-end tesing** | 5d | 2026-02-04 | 2026-02-10 |  | 0d |  |  | 160h |
| 209 | 1.6.2.1.1 | Auction User Authentication | 5d | 2026-02-04 | 2026-02-10 |  | 91d | 0d | Tester2 | 40h |
| 210 | 1.6.2.1.2 | Auction registration, login | 5d | 2026-02-04 | 2026-02-10 | 206 | 91d | 0d | Tester2 | 40h |
| 211 | 1.6.2.1.3 | Auction payment testing | 5d | 2026-02-04 | 2026-02-10 |  | 0d |  | Tester2 | 40h |
| 212 | 1.6.2.1.4 | test items webpage | 5d | 2026-02-04 | 2026-02-10 |  | 79d | 0d | Tester2 | 40h |
| 213 | 1.6.2.2 | **back-end tesing** | 47d | 2026-02-04 | 2026-04-09 | 199 | 5d | 0d |  | 720h |
| 214 | 1.6.2.2.1 | User Management Service | 12d | 2026-02-04 | 2026-02-19 |  | 65d | 0d | Tester3 | 96h |
| 215 | 1.6.2.2.2 | Medical Supplies Product Review and Verification Service. | 12d | 2026-02-11 | 2026-02-26 | 211 | 0d |  | Tester3 | 96h |
| 216 | 1.6.2.2.3 | Real-Time Bidding System Service. | 12d | 2026-02-11 | 2026-02-26 | 212 | 79d | 0d | Tester3 | 96h |
| 217 | 1.6.2.2.4 | Medical Supplies Online Service. | 12d | 2026-02-04 | 2026-02-19 |  | 28d | 0d | Tester3 | 96h |
| 218 | 1.6.2.2.5 | Feedback and Rating Service. | 12d | 2026-02-20 | 2026-03-09 | 214 | 65d | 0d | Tester3 | 96h |
| 219 | 1.6.2.2.6 | API Integration | 30d | 2026-02-27 | 2026-04-09 | 205, 215 | 0d |  | Tester3 | 240h |
| 220 | 1.6.3 | **Other Testing.** | 54d | 2026-02-04 | 2026-04-20 | 199 | 42d | 0d |  | 280h |
| 221 | 1.6.3.1 | Security Testing. | 7d | 2026-02-04 | 2026-02-12 |  | 77d | 0d | Tester4 | 56h |
| 222 | 1.6.3.2 | Performance Testing. | 7d | 2026-03-10 | 2026-03-18 | 218 | 65d | 0d | Tester4 | 56h |
| 223 | 1.6.3.3 | Test reporting and defact tracking | 7d | 2026-04-10 | 2026-04-20 | 219 | 0d |  | Tester4 | 56h |
| 224 | 1.6.3.4 | Usability Testing. | 7d | 2026-02-04 | 2026-02-12 |  | 89d | 0d | Tester4 | 56h |
| 225 | 1.6.3.5 | Execute Test Cases: | 7d | 2026-02-13 | 2026-02-23 | 221 | 77d | 0d | Tester4 | 56h |
| 226 | 1.6.4 | **Test execution** | 40d | 2026-01-26 | 2026-03-20 |  | 47d | 0d |  | 688h |
| 227 | 1.6.4.1 | **UAT testing** | 26d | 2026-01-26 | 2026-03-02 | 204 | 77d | 0d |  | 256h |
| 228 | 1.6.4.1.1 | Prepare UAT evnironment | 5d | 2026-01-26 | 2026-01-30 |  | 98d | 0d | Tester1; Tester2 | 80h |
| 229 | 1.6.4.1.2 | Define auction testingscenarios | 5d | 2026-02-24 | 2026-03-02 | 225 | 77d | 0d | Tester1; Tester2 | 80h |
| 230 | 1.6.4.1.3 | Feedback from UAT team | 4d | 2026-01-26 | 2026-01-29 |  | 85d | 0d | Tester1; Tester2 | 64h |
| 231 | 1.6.4.1.4 | Sign off and documents | 2d | 2026-01-26 | 2026-01-27 |  | 89d | 0d | Tester1; Tester2 | 32h |

| ID | WBS | Task | Duration | Start | Finish | Predecessors | Total slack | Free slack | Resources | Work | Cost |
| --- | --- | --- | --- | --- | --- | --- | --- | --- | --- | --- | --- |
| 232 | 1.6.4.2 | **Integration Testing** | 21d | 2026-02-20 | 2026-03-20 | 199, 217 | 28d | 0d |  | 432h |  |
| 233 | 1.6.4.2.1 | Prepare testing evnironment | 5d | 2026-02-20 | 2026-02-26 |  | 47d | 0d | Tester4 | 40h |  |
| 234 | 1.6.4.2.2 | Add testing Cases | 5d | 2026-02-20 | 2026-02-26 | 230 | 70d | 0d | Tester4 | 40h |  |
| 235 | 1.6.4.2.3 | Front-end page Testing | 12d | 2026-02-20 | 2026-03-09 | 231 | 72d | 0d | Tester4 | 96h |  |
| 236 | 1.6.4.2.4 | Back-end API Testing | 14d | 2026-02-20 | 2026-03-11 |  | 28d | 0d | Tester4 | 112h |  |
| 237 | 1.6.4.2.5 | Performance Testing | 16d | 2026-02-27 | 2026-03-20 | 233 | 47d | 0d | Tester4 | 128h |  |
| 238 | 1.6.4.2.6 | Analyze Results: | 2d | 2026-02-27 | 2026-03-02 | 234 | 70d | 0d | Tester4 | 16h |  |
| 239 | 1.6.5 | **AI-based Bidding Algorithms Testing** | 291d | 2025-03-03 | 2026-04-13 |  | 47d | 0d |  | 472h |  |
| 240 | 1.6.5.1 | Define experimental and control users | 5d | 2025-03-03 | 2025-03-07 |  | 297d | 0d | Tester5 | 40h |  |
| 241 | 1.6.5.2 | Determine the test period | 4d | 2026-03-23 | 2026-03-26 | 237 | 47d | 0d | Tester5 | 32h |  |
| 242 | 1.6.5.3 | Monitoring indicators | 4d | 2026-03-03 | 2026-03-06 | 238 | 70d | 0d | Tester5 | 32h |  |
| 243 | 1.6.5.4 | Deploying new algorithms | 2d | 2025-03-03 | 2025-03-04 |  | 331d | 0d | Tester5 | 16h |  |
| 244 | 1.6.5.5 | New algorithm for data analysis | 12d | 2025-03-10 | 2025-03-25 | 240 | 297d | 0d | Tester5 | 96h |  |
| 245 | 1.6.5.6 | Algorithm optimization | 12d | 2026-03-27 | 2026-04-13 | 241 | 47d | 0d | Tester5 | 96h |  |
| 246 | 1.6.5.7 | Algorithm update | 3d | 2026-03-09 | 2026-03-11 | 242 | 70d | 0d | Tester5 | 24h |  |
| 247 | 1.6.5.8 | Continuous monitoring | 5d | 2025-03-05 | 2025-03-11 | 243 | 331d | 0d | Tester5 | 40h |  |
| 248 | 1.6.5.9 | Iterative optimization | 12d | 2025-03-26 | 2025-04-10 | 244 | 297d | 0d | Tester5 | 96h |  |
| 249 | 1.6.6 | **Test reporting and defect tracking** | 42d | 2026-04-21 | 2026-06-17 | 217, 236, 223 | 0d |  |  | 3160h | 204,800 |
| 250 | 1.6.6.1 | **Bug logging** | 12d | 2026-04-21 | 2026-05-06 |  | 4d | 0d |  | 704h |  |
| 251 | 1.6.6.1.1 | Classify Bug Logs | 5d | 2026-04-21 | 2026-04-27 |  | 37d | 0d | Tester1; Tester2 | 80h |  |
| 252 | 1.6.6.1.2 | Search for Bug Logs | 12d | 2026-04-21 | 2026-05-06 | 248 | 30d | 0d | Tester1; Tester2 | 192h |  |
| 253 | 1.6.6.1.3 | Organize Bug Report | 12d | 2026-04-21 | 2026-05-06 |  | 30d | 0d | Tester1; Tester2 | 192h |  |
| 254 | 1.6.6.1.4 | Send to Developers for Handling | 3d | 2026-04-21 | 2026-04-23 |  | 34d | 0d | Tester1; Tester2 | 48h |  |
| 255 | 1.6.6.1.5 | Add Bug Report Progress Tracking | 12d | 2026-04-21 | 2026-05-06 | 171 | 4d | 0d | Tester1; Tester2 | 192h |  |

| ID | WBS | Task | Duration | Start | Finish | Predecessors | Total slack | Free slack | Resources | Work | Cost |
| --- | --- | --- | --- | --- | --- | --- | --- | --- | --- | --- | --- |
| 256 | 1.6.6.2 | **Bug tracking** | 42d | 2026-04-21 | 2026-06-17 |  | 0d |  |  | 2456h | 204,800 |
| 257 | 1.6.6.2.1 | Add Bug Report Progress Tracking | 12d | 2026-04-21 | 2026-05-06 |  | 30d | 0d | Tester3; Tester4 | 192h |  |
| 258 | 1.6.6.2.2 | Display Report After Handling, Further Testing | 5d | 2026-04-24 | 2026-04-30 | 254 | 34d | 0d | Tester3; Tester4 | 80h |  |
| 259 | 1.6.6.2.3 | Bug Issue Resolution Completed | 2d | 2026-05-07 | 2026-05-08 | 255 | 4d | 0d | Tester3; Tester4 | 32h |  |
| 260 | 1.6.6.2.4 | **Deployment[Kailong Duan]** | 42d | 2026-04-21 | 2026-06-17 |  | 0d |  |  | 2152h | 204,800 |
| 261 | 1.6.6.2.4.1 | **Deployment plan** | 31d | 2026-04-21 | 2026-06-02 |  | 2d | 0d |  | 248h | 12,400 |
| 262 | 1.6.6.2.4.1.1 | Add deployment target/ requirement | 5d | 2026-04-21 | 2026-04-27 |  | 5d | 0d | Deploy-eng-4 | 40h |  |
| 263 | 1.6.6.2.4.1.2 | Connect to the code repository | 5d | 2026-05-11 | 2026-05-15 | 259 | 4d | 0d | Deploy-eng-4 | 40h |  |
| 264 | 1.6.6.2.4.1.3 | Pull the latest code changes | 3d | 2026-04-21 | 2026-04-23 |  | 12d | 0d | Deploy-eng-4 | 24h |  |
| 265 | 1.6.6.2.4.1.4 | Deploy the application | 3d | 2026-04-21 | 2026-04-23 |  | 2d | 0d | Deploy-eng-4 | 24h |  |
| 266 | 1.6.6.2.4.1.5 | Build the application | 3d | 2026-04-28 | 2026-04-30 | 262 | 5d | 0d | Deploy-eng-4 | 24h |  |
| 267 | 1.6.6.2.4.1.6 | Verify functionality | 12d | 2026-05-18 | 2026-06-02 | 263 | 4d | 0d | Deploy-eng-4 | 96h |  |
| 268 | 1.6.6.2.4.2 | **Infrastructure Setup** | 38d | 2026-04-21 | 2026-06-11 |  | 0d |  |  | 464h | 23,200 |
| 269 | 1.6.6.2.4.2.1 | Purchase hardware and software | 3d | 2026-04-21 | 2026-04-23 |  | 27d | 0d | Deploy-eng-1; Deploy-eng-2 | 48h |  |
| 270 | 1.6.6.2.4.2.2 | Hardware installment | 7d | 2026-05-01 | 2026-05-11 | 266 | 5d | 0d | Deploy-eng-1; Deploy-eng-2 | 112h |  |
| 271 | 1.6.6.2.4.2.3 | CPU, GPU, Memory,Server, Network,Ram | 7d | 2026-06-03 | 2026-06-11 | 267 | 4d | 0d | Deploy-eng-1; Deploy-eng-2 | 112h |  |
| 272 | 1.6.6.2.4.2.4 | Software installment | 5d | 2026-04-21 | 2026-04-27 |  | 0d |  | Deploy-eng-2; Deploy-eng-1 | 80h |  |
| 273 | 1.6.6.2.4.2.5 | jenkins, docker, linux, database | 7d | 2026-04-24 | 2026-05-04 | 269 | 27d | 0d | Deploy-eng-2; Deploy-eng-1 | 112h |  |
| 274 | 1.6.6.2.4.3 | **Configuration** | 22d | 2026-04-24 | 2026-05-25 | 265 | 2d | 0d |  |  | 20,000 |
| 275 | 1.6.6.2.4.3.1 | Build dev environment | 5d | 2026-05-12 | 2026-05-18 | 270 | 5d | 0d |  |  |  |
| 276 | 1.6.6.2.4.3.2 | Build testing environment | 5d | 2026-04-28 | 2026-05-04 | 272 | 0d |  |  |  |  |
| 277 | 1.6.6.2.4.3.3 | Build produce environment | 5d | 2026-05-05 | 2026-05-11 | 273 | 27d | 0d |  |  |  |
| 278 | 1.6.6.2.4.3.4 | configure the network | 5d | 2026-04-24 | 2026-04-30 |  | 8d | 0d |  |  |  |
| 279 | 1.6.6.2.4.3.5 | configure firewall and security | 5d | 2026-05-19 | 2026-05-25 | 275 | 5d | 0d |  |  |  |

| ID | WBS | Task | Duration | Start | Finish | Predecessors | Total slack | Free slack | Resources | Work | Cost |
| --- | --- | --- | --- | --- | --- | --- | --- | --- | --- | --- | --- |
| 280 | 1.6.6.2.4.4 | **AI-based Bidding Algorithm Deploy** | 37d | 2026-04-21 | 2026-06-10 |  | 5d | 0d |  | 480h | 24,000 |
| 281 | 1.6.6.2.4.4.1 | Model Export | 5d | 2026-04-24 | 2026-04-30 | 264 | 12d | 0d | Deploy-eng-4 | 40h |  |
| 282 | 1.6.6.2.4.4.2 | Add data monitoring | 14d | 2026-05-01 | 2026-05-20 | 278 | 8d | 0d | Deploy-eng-4 | 112h |  |
| 283 | 1.6.6.2.4.4.3 | Inference Service | 12d | 2026-05-26 | 2026-06-10 | 279 | 5d | 0d | Deploy-eng-4 | 96h |  |
| 284 | 1.6.6.2.4.4.4 | Continuous Updates (CI/CD) | 12d | 2026-04-21 | 2026-05-06 |  | 30d | 0d | Deploy-eng-4 | 96h |  |
| 285 | 1.6.6.2.4.4.5 | Build version vontrol | 5d | 2026-05-01 | 2026-05-07 | 281 | 12d | 0d | Deploy-eng-4 | 40h |  |
| 286 | 1.6.6.2.4.4.6 | Iterative update | 12d | 2026-05-21 | 2026-06-05 | 282 | 8d | 0d | Deploy-eng-4 | 96h |  |
| 287 | 1.6.6.2.4.5 | **Deploy Solution** | 42d | 2026-04-21 | 2026-06-17 |  | 0d |  |  | 960h | 125,200 |
| 288 | 1.6.6.2.4.5.1 | Final Deployment Verification | 3d | 2026-05-05 | 2026-05-07 | 276 | 0d |  |  |  |  |
| 289 | 1.6.6.2.4.5.2 | **Product Released** | 27d | 2026-04-21 | 2026-05-27 |  | 12d | 0d |  |  | 9,600 |
| 290 | 1.6.6.2.4.5.2.1 | Validate Feedback collection | 14d | 2026-05-08 | 2026-05-27 | 285 | 12d | 0d |  |  |  |
| 291 | 1.6.6.2.4.5.2.2 | Environment Health Check | 3d | 2026-04-21 | 2026-04-23 |  | 24d | 0d |  |  |  |
| 292 | 1.6.6.2.4.5.2.3 | Product Released | 7d | 2026-05-08 | 2026-05-18 | 288 | 0d |  |  |  |  |
| 293 | 1.6.6.2.4.5.3 | **Release Process** | 27d | 2026-04-24 | 2026-06-01 |  | 12d | 0d |  |  | 4,400 |
| 294 | 1.6.6.2.4.5.3.1 | Define Release Methodology: | 3d | 2026-05-28 | 2026-06-01 | 289 | 12d | 0d |  |  |  |
| 295 | 1.6.6.2.4.5.3.2 | Rollout Plan | 3d | 2026-04-24 | 2026-04-28 | 291 | 24d | 0d |  |  |  |
| 296 | 1.6.6.2.4.5.3.3 | Test in Production | 5d | 2026-05-19 | 2026-05-25 | 292 | 0d |  |  |  |  |
| 297 | 1.6.6.2.4.5.4 | **Release Management** | 24d | 2026-04-29 | 2026-06-01 |  | 7d | 0d |  | 352h | 17,600 |
| 298 | 1.6.6.2.4.5.4.1 | Version Control& Tracking: | 12d | 2026-05-12 | 2026-05-27 | 270 | 10d | 0d | Deploy-eng-1; Deploy-eng-2 | 192h |  |
| 299 | 1.6.6.2.4.5.4.2 | Build CI/CD Pipeline | 5d | 2026-04-29 | 2026-05-05 | 295 | 24d | 0d | Deploy-eng-1; Deploy-eng-2 | 80h |  |
| 300 | 1.6.6.2.4.5.4.3 | Automated Rollback | 5d | 2026-05-26 | 2026-06-01 | 296 | 0d |  | Deploy-eng-1; Deploy-eng-2 | 80h |  |
| 301 | 1.6.6.2.4.5.5 | **Gather and Analysis** | 42d | 2026-04-21 | 2026-06-17 |  | 0d |  |  | 608h | 30,400 |
| 302 | 1.6.6.2.4.5.5.1 | Data Logging and Tracking: | 5d | 2026-06-02 | 2026-06-08 | 297 | 7d | 0d | Deploy-eng-1; Deploy-eng-2 | 80h |  |
| 303 | 1.6.6.2.4.5.5.2 | User Analytics | 7d | 2026-05-06 | 2026-05-14 | 299 | 24d | 0d | Deploy-eng-1; Deploy-eng-2 | 112h |  |
| 304 | 1.6.6.2.4.5.5.3 | Business Impact Analysis | 12d | 2026-06-02 | 2026-06-17 | 300 | 0d |  | Deploy-eng-1; Deploy-eng-2 | 192h |  |
| 305 | 1.6.6.2.4.5.5.4 | Continuous Improvement | 14d | 2026-04-21 | 2026-05-08 |  | 28d | 0d | Deploy-eng-1; Deploy-eng-2 | 224h |  |
